| TaskID | TaskName | StartDate | EndDate | Duration | Progress | DurationUnit | resources | info | Predecessor |
| --- | --- | --- | --- | --- | --- | --- | --- | --- | --- |
| 1 | Preparation – التحضير | 2026-11-15T05:00:00.000Z | 2026-12-03T14:00:00.000Z | 15 | 0 | day |  |  |  |
| 2 | · Kick-off & relocation plan sign-off – اجتماع الانطلاق واعتماد خطة الانتقال | 2026-11-15T05:00:00.000Z | 2026-11-15T14:00:00.000Z | 1 | 0 | day | Anas Anas 100 | Confirm scope, budget, move date (Fri 4 – Sat 5 Dec 2026) and owners with Sara and Khalid. |  |
| 3 | · Inventory of furniture, equipment & files – جرد الأثاث والمعدات والملفات | 2026-11-16T05:00:00.000Z | 2026-11-18T14:00:00.000Z | 3 | 0 | day | Sara Sara 100 | Room-by-room list; mark what moves, what is disposed of, what is bought new. | 2FS |
| 4 | · Select & contract the moving company – اختيار شركة النقل والتعاقد معها | 2026-11-16T05:00:00.000Z | 2026-11-22T14:00:00.000Z | 5 | 0 | day | Anas Anas 100 | Three quotes, site visits to both buildings, insurance cover, signed contract. | 2FS |
| 5 | · New building readiness check (power, access, fit-out) – فحص جاهزية المبنى الجديد | 2026-11-16T05:00:00.000Z | 2026-11-18T14:00:00.000Z | 3 | 0 | day | Khalid Khalid 100 | Walk-through with building management: power, AC, lighting, doors/access control, server room, cabling routes. | 2FS |
| 6 | · Internet & network installation at the new building – تركيب الإنترنت والشبكة في المبنى الجديد | 2026-11-19T05:00:00.000Z | 2026-11-30T14:00:00.000Z | 8 | 0 | day | Khalid Khalid 100 | ISP order and activation, structured cabling, switches, Wi-Fi, printers and phones. | 5FS |
| 7 | · Order packing materials & labels – طلب مواد التغليف والملصقات | 2026-11-19T05:00:00.000Z | 2026-11-22T14:00:00.000Z | 2 | 0 | day | Sara Sara 100 | Quantities from the inventory; colour-coded labels per team/room. | 3FS |
| 8 | · Floor plan & seating allocation – مخطط الطوابق وتوزيع المقاعد | 2026-11-23T05:00:00.000Z | 2026-11-25T14:00:00.000Z | 3 | 0 | day | Sara Sara 100 | Desk-by-desk plan for the new building; label codes match the packing labels. | 7FS |
| 9 | · Moving-day schedule & packing plan with the movers – جدول يوم النقل وخطة التغليف مع شركة النقل | 2026-11-23T05:00:00.000Z | 2026-11-24T14:00:00.000Z | 2 | 0 | day | Anas Anas 100, Moving company (external) Moving company (external) 100 | Truck timings, lift bookings at both buildings, crew size, fragile/IT handling, contact list. | 4FS |
| 10 | · Access badges, parking & security at the new building – تصاريح الدخول والمواقف والأمن في المبنى الجديد | 2026-11-25T05:00:00.000Z | 2026-11-29T14:00:00.000Z | 3 | 0 | day | Anas Anas 100 | Badge list for all staff, parking allocation, keys for the moving crew on the weekend. | 9FS |
| 11 | · Notify staff, clients & suppliers; update address records – إبلاغ الموظفين والعملاء والموردين وتحديث بيانات العنوان | 2026-11-26T05:00:00.000Z | 2026-12-02T14:00:00.000Z | 5 | 0 | day | Sara Sara 100 | Staff briefing, client/supplier notice, bank, commercial registration, Google Maps, website, stationery. | 8FS |
| 12 | · Old-office exit: utilities notices & lease handback checklist – إشعارات فصل الخدمات وقائمة تسليم المكتب القديم | 2026-11-30T05:00:00.000Z | 2026-12-02T14:00:00.000Z | 3 | 0 | day | Anas Anas 100 | Electricity, water, internet disconnection dates; landlord inspection date; meter readings. | 10FS |
| 13 | · Data backup & IT shutdown plan – النسخ الاحتياطي للبيانات وخطة إيقاف الأنظمة | 2026-12-01T05:00:00.000Z | 2026-12-02T14:00:00.000Z | 2 | 0 | day | Khalid Khalid 100 | Full backup verified off-site; shutdown/restart order for servers, network and workstations. | 6FS |
| 14 | · Final packing & labelling of desks and files – التغليف النهائي ووضع الملصقات | 2026-12-03T05:00:00.000Z | 2026-12-03T14:00:00.000Z | 1 | 0 | day | Anas Anas 100, Sara Sara 100, Khalid Khalid 100 | Everyone packs their own desk; shared areas and archives packed by the team; IT equipment powered down at 17:00. | 11FS,12FS,13FS,7FS |
| 15 | · Ready to move – جاهزون للانتقال | 2026-12-03T14:00:00.000Z | 2026-12-03T14:00:00.000Z | 0 | 0 | day |  |  | 14FS |
| 16 | Moving weekend – نهاية أسبوع الانتقال | 2026-12-04T05:00:00.000Z | 2026-12-05T14:00:00.000Z | 2 | 0 | day |  |  |  |
| 17 | · Disconnect, load & transport to the new building – الفك والتحميل والنقل إلى المبنى الجديد | 2026-12-04T05:00:00.000Z | 2026-12-04T14:00:00.000Z | 1 | 0 | day | Moving company (external) Moving company (external) 100, Anas Anas 100 | Friday: movers dismantle and load at the old office; Anas supervises and signs the inventory sheet. | 15FS |
| 18 | · Unload & place furniture per floor plan – التفريغ وتوزيع الأثاث حسب المخطط | 2026-12-05T05:00:00.000Z | 2026-12-05T14:00:00.000Z | 1 | 0 | day | Moving company (external) Moving company (external) 100, Sara Sara 100 | Saturday: boxes and furniture to the labelled positions; Sara checks against the floor plan. | 17FS |
| 19 | · Reinstall IT equipment & test the network – إعادة تركيب أجهزة تقنية المعلومات واختبار الشبكة | 2026-12-05T05:00:00.000Z | 2026-12-05T14:00:00.000Z | 1 | 0 | day | Khalid Khalid 100 | Saturday: server room, switches, Wi-Fi, printers, phones; test internet and shared drives before Sunday. | 17FS |
| 20 | · Old office final clean-up & key handover – التنظيف النهائي وتسليم مفاتيح المكتب القديم | 2026-12-05T05:00:00.000Z | 2026-12-05T09:00:00.000Z | 0.5 | 0 | day | Anas Anas 100 | Saturday morning: final sweep, photos, meter readings, keys to the landlord. | 17FS |
| 21 | · Move complete – اكتمال النقل | 2026-12-05T14:00:00.000Z | 2026-12-05T14:00:00.000Z | 0 | 0 | day |  |  | 18FS,19FS,20FS |
| 22 | Settling in – الاستقرار في المكتب الجديد | 2026-12-06T05:00:00.000Z | 2026-12-16T14:00:00.000Z | 9 | 0 | day |  |  |  |
| 23 | · Unpack & set up workstations – فك التغليف وتجهيز محطات العمل | 2026-12-06T05:00:00.000Z | 2026-12-07T14:00:00.000Z | 2 | 0 | day | Anas Anas 100, Sara Sara 100 | Sunday–Monday: staff unpack their own desks; shared areas, kitchen and meeting rooms set up by the team. | 21FS |
| 24 | · IT support & snag fixing (network, printers, phones) – الدعم التقني ومعالجة ملاحظات الأنظمة | 2026-12-06T05:00:00.000Z | 2026-12-10T14:00:00.000Z | 5 | 0 | day | Khalid Khalid 100 | First-week support desk; fix connectivity, printing and telephony issues as staff settle in. | 21FS |
| 25 | · Staff orientation & safety briefing at the new building – تعريف الموظفين بالمبنى وإحاطة السلامة | 2026-12-08T05:00:00.000Z | 2026-12-08T14:00:00.000Z | 1 | 0 | day | Sara Sara 100 | Tour, emergency exits, fire assembly point, access rules, parking, facilities contacts. | 23FS |
| 26 | · Building snag list & fixes with facilities – قائمة الملاحظات وإصلاحها مع إدارة المبنى | 2026-12-08T05:00:00.000Z | 2026-12-14T14:00:00.000Z | 5 | 0 | day | Anas Anas 100 | Collect issues from staff (AC, lighting, doors, furniture damage) and close them with building management and the movers' insurance. | 23FS |
| 27 | · Return packing materials & close the movers' contract – إعادة مواد التغليف وإقفال عقد شركة النقل | 2026-12-09T05:00:00.000Z | 2026-12-10T14:00:00.000Z | 2 | 0 | day | Sara Sara 100, Moving company (external) Moving company (external) 100 | Collect empty boxes/crates, sign off the damage report, approve the final invoice. | 25FS |
| 28 | · Close the old office: final bills, deposit & records update – إقفال المكتب القديم: الفواتير النهائية والتأمين وتحديث السجلات | 2026-12-13T05:00:00.000Z | 2026-12-15T14:00:00.000Z | 3 | 0 | day | Sara Sara 100 | Final utility bills, deposit refund, remaining address changes, archive the old-office documents. | 27FS |
| 29 | · Post-move review & lessons learned – مراجعة ما بعد الانتقال والدروس المستفادة | 2026-12-16T05:00:00.000Z | 2026-12-16T14:00:00.000Z | 1 | 0 | day | Anas Anas 100, Sara Sara 100, Khalid Khalid 100 | What went well, what to fix, budget vs. actual, closing the relocation project. | 24FS,26FS,28FS |
| 30 | · Relocation complete – اكتمال الانتقال | 2026-12-16T14:00:00.000Z | 2026-12-16T14:00:00.000Z | 0 | 0 | day |  |  | 29FS |

Links (from, to):
- 8 12
- 13 17
